# iGo_WBS2

How a schedule from MS Project changed from version to version. A marks actual dates.

## Version 1 (data date 2008-10-21, saved 2008-10-30)

| ID | WBS | Task | Duration | Start | Finish | Predecessors | Complete | Total float | Constraint |
| --- | --- | --- | --- | --- | --- | --- | --- | --- | --- |
| 1 | 1 | **Projet** | 117d | 2008-09-22 A | 2009-01-27 |  | 41% | 0d |  |
| 2 | 1.1 | **Réunion hebdomadaire de l'équipe du projet** | 91d | 2008-09-22 A | 2008-12-22 |  |  | 26d |  |
| 3 |  | Réunion hebdomadaire de l'équipe du projet 1 | 0d | 2008-09-22 A | 2008-09-22 A |  | 100% |  | start no earlier than 2008-09-22 |
| 4 |  | Réunion hebdomadaire de l'équipe du projet 2 | 0d | 2008-09-29 A | 2008-09-29 A |  | 100% |  | start no earlier than 2008-09-29 |
| 5 |  | Réunion hebdomadaire de l'équipe du projet 3 | 0d | 2008-10-06 A | 2008-10-06 A |  | 100% |  | start no earlier than 2008-10-06 |
| 6 |  | Réunion hebdomadaire de l'équipe du projet 4 | 0d | 2008-10-13 A | 2008-10-13 A |  | 100% |  | start no earlier than 2008-10-13 |
| 7 |  | Réunion hebdomadaire de l'équipe du projet 5 | 0d | 2008-10-20 A | 2008-10-20 A |  | 100% |  | start no earlier than 2008-10-20 |
| 8 |  | Réunion hebdomadaire de l'équipe du projet 6 | 0d | 2008-10-27 | 2008-10-27 |  |  | 60.57d | start no earlier than 2008-10-27 |
| 9 |  | Réunion hebdomadaire de l'équipe du projet 7 | 0d | 2008-11-03 | 2008-11-03 |  |  | 53d | start no earlier than 2008-11-03 |
| 10 |  | Réunion hebdomadaire de l'équipe du projet 8 | 0d | 2008-11-10 | 2008-11-10 |  |  | 45.43d | start no earlier than 2008-11-10 |
| 11 |  | Réunion hebdomadaire de l'équipe du projet 9 | 0d | 2008-11-17 | 2008-11-17 |  |  | 37.86d | start no earlier than 2008-11-17 |
| 12 |  | Réunion hebdomadaire de l'équipe du projet 10 | 0d | 2008-11-24 | 2008-11-24 |  |  | 30.29d | start no earlier than 2008-11-24 |
| 13 |  | Réunion hebdomadaire de l'équipe du projet 11 | 0d | 2008-12-01 | 2008-12-01 |  |  | 22.71d | start no earlier than 2008-12-01 |
| 14 |  | Réunion hebdomadaire de l'équipe du projet 12 | 0d | 2008-12-08 | 2008-12-08 |  |  | 15.14d | start no earlier than 2008-12-08 |
| 15 |  | Réunion hebdomadaire de l'équipe du projet 13 | 0d | 2008-12-15 | 2008-12-15 |  |  | 7.57d | start no earlier than 2008-12-15 |
| 16 |  | Réunion hebdomadaire de l'équipe du projet 14 | 0d | 2008-12-22 | 2008-12-22 |  |  | 26.14d | start no earlier than 2008-12-22 |
| 17 | 1.2 | **Etude préalable** | 32d | 2008-09-22 A | 2008-10-23 |  | 99% | 0d |  |
| 18 |  | Découpage prévisionnel | 1d | 2008-09-22 A | 2008-09-22 A |  | 100% |  |  |
| 19 | 1.2.2 | **Diagrammes fonctionnels (UML)** | 22d | 2008-09-23 A | 2008-10-14 A |  | 100% |  |  |
| 20 |  | Diagramme de classes | 10d | 2008-09-23 A | 2008-10-02 A | 18 | 100% |  |  |
| 21 |  | Diagrammes des cas d'utilisation | 10d | 2008-10-03 A | 2008-10-12 A | 20 | 100% |  |  |
| 22 |  | Diagrammes de séquence | 10d | 2008-10-03 A | 2008-10-14 A | 20 | 100% |  |  |
| 23 |  | Estimation des délais | 9d | 2008-09-23 A | 2008-10-01 A | 18 | 100% |  | start no earlier than 2008-09-22 |
| 24 |  | Contraintes techniques | 11d | 2008-10-03 A | 2008-10-13 A |  | 100% |  | start no earlier than 2008-10-03 |
| 25 |  | Ergonomie | 11d | 2008-10-07 A | 2008-10-17 A |  | 100% |  | start no earlier than 2008-10-07 |
| 26 |  | Etude qualité | 12d | 2008-10-03 A | 2008-10-16 A |  | 100% |  | start no earlier than 2008-10-03 |
| 27 |  | Rapport préalable | 5d | 2008-10-18 A | 2008-10-22 A | 18, 23, 24, 26, 25, 21, 22 | 100% |  | start no earlier than 2008-10-16 |
| 28 |  | Rendus 1 | 0d | 2008-10-23 | 2008-10-23 | 27 |  | 0d | must start on 2008-10-23 |
| 29 |  | Retour sur le Rendu 1 | 0d | 2008-11-03 | 2008-11-03 |  |  | 4d | start no earlier than 2008-11-03 |
| 30 | 1.4 | **Etude technique** | 28d | 2008-10-24 | 2008-11-20 |  |  | 0d |  |
| 31 |  | Description des modules | 5d | 2008-10-24 | 2008-10-28 | 28 |  | 14.5d |  |
| 32 | 1.4.2 | **Mise à jour des diagrammes** | 3d | 2008-11-03 | 2008-11-06 |  |  | 4.5d |  |
| 33 |  | Diagramme de classes | 3d | 2008-11-03 | 2008-11-06 | 29 |  | 4.5d |  |
| 34 |  | Diagrammes des cas d'utilisation | 2d | 2008-11-04 | 2008-11-05 | 29 |  | 11.5d |  |
| 35 |  | Diagrammes de séquence | 3d | 2008-11-04 | 2008-11-06 | 29 |  | 10.5d | start no earlier than 2008-11-04 |
| 36 |  | Spécification des plans de test | 6d | 2008-11-07 | 2008-11-12 | 33 |  | 4.5d |  |
| 37 |  | Algorithme de calcul | 10d | 2008-10-24 | 2008-11-02 | 28 |  | 14.5d |  |
| 38 |  | Plan de développement | 5d | 2008-10-29 | 2008-11-02 | 31 |  | 14.5d |  |
| 39 |  | Mise à jour du Planning | 2d | 2008-11-04 | 2008-11-05 |  |  | 11.5d | start no earlier than 2008-11-04 |
| 40 |  | PAQ complété | 3.5d | 2008-11-14 | 2008-11-17 | 31, 36, 39, 38, 37, 35, 34 |  | 3.5d | start no earlier than 2008-11-14 |
| 41 |  | Rendu 2 | 0d | 2008-11-20 | 2008-11-20 | 40 |  | 0d | must start on 2008-11-20 |
| 42 |  | Retour sur le rendu 2 | 0d | 2008-11-24 | 2008-11-24 |  |  | 53d | start no earlier than 2008-11-24 |
| 43 | 1.6 | **Réalisation** | 20d | 2008-11-21 | 2008-12-10 |  |  | 3.5d |  |
| 44 |  | Codage | 10d | 2008-11-21 | 2008-11-30 | 41 |  | 3.5d |  |
| 45 |  | Documentations | 10d | 2008-12-01 | 2008-12-10 | 44 |  | 25d | start no earlier than 2008-11-30 |
| 46 |  | Tests unitaires | 10d | 2008-11-21 | 2008-11-30 | 44SS |  | 12.5d |  |
| 47 |  | Plan de recettes | 9.5d | 2008-12-01 | 2008-12-10 | 44 |  | 20.5d |  |
| 48 |  | Plan mise en œuvre utilisateur | 9d | 2008-12-01 | 2008-12-09 | 44 |  | 3.5d | start no earlier than 2008-12-01 |
| 49 | 1.7 | **Mise en œuvre** | 22.5d | 2008-12-10 | 2009-01-12 |  |  | 3.5d |  |
| 50 |  | Test d'integration | 5d | 2008-12-10 | 2008-12-14 | 46, 48 |  | 3.5d |  |
| 51 |  | Generalisation | 12.5d | 2008-12-15 | 2009-01-07 | 50 |  | 3.5d |  |
| 52 |  | PV de recette | 5d | 2009-01-07 | 2009-01-12 | 51, 47 |  | 3.5d |  |
| 53 |  | Rendu final | 0d | 2009-01-15 | 2009-01-15 | 45, 52 |  | 0d | must start on 2009-01-15 |
| 54 |  | Préparation soutenance | 5d | 2009-01-20 | 2009-01-24 | 53 |  | 3d | start no earlier than 2009-01-20 |
| 55 |  | Soutenance | 0d | 2009-01-27 | 2009-01-27 | 54 |  | 0d | start no earlier than 2009-01-27 |

## Version 2 (data date 2008-10-21, saved 2008-11-05)

Last finish stays 2009-01-27. Complete tasks 14 → 18.

Added:

| ID | Task | Duration | Start | Finish | Resources |
| --- | --- | --- | --- | --- | --- |
| 45 | IHM | 20d? | 2008-11-25 | 2008-12-14 | Bryan |
| 46 | Evenements | 20d? | 2008-11-25 | 2008-12-14 | Bryan |
| 47 | Gestion du réseau | 20d? | 2008-11-25 | 2008-12-14 | Bryan |
| 48 | Algorithme de recherche | 20d? | 2008-11-25 | 2008-12-14 | Bryan |
| 50 | IHM | 10d? | 2008-12-15 | 2008-12-24 | Bryan |
| 51 | Evenements | 10d? | 2008-12-15 | 2008-12-24 | Bryan |
| 52 | Gestion du réseau | 10d? | 2008-12-15 | 2008-12-24 | Bryan |
| 53 | Algorithme de recherche | 10d? | 2008-12-15 | 2008-12-24 | Bryan |
| 55 | IHM | 20d? | 2008-11-25 | 2008-12-14 | Bryan |
| 56 | Evenements | 20d? | 2008-11-25 | 2008-12-14 | Bryan |
| 57 | Gestion du réseau | 20d? | 2008-11-25 | 2008-12-14 | Bryan |
| 58 | Algorithme de recherche | 20d? | 2008-11-25 | 2008-12-14 | Bryan |

Changed:

| ID | Task | Start | Finish | Duration | Complete | Total float | Predecessors | Other |
| --- | --- | --- | --- | --- | --- | --- | --- | --- |
| 1 | **Projet** |  |  | 117d → 117d? | 41% → 26% |  |  | baseline start none → 2008-09-22; baseline finish none → 2009-01-27 |
| 2 | **Réunion hebdomadaire de l'équipe du projet** |  |  |  |  |  |  | baseline start none → 2008-09-22; baseline finish none → 2008-12-22 |
| 3 | Réunion hebdomadaire de l'équipe du projet 1 |  |  |  |  |  |  | baseline start none → 2008-09-22; baseline finish none → 2008-09-22 |
| 4 | Réunion hebdomadaire de l'équipe du projet 2 |  |  |  |  |  |  | baseline start none → 2008-09-29; baseline finish none → 2008-09-29 |
| 5 | Réunion hebdomadaire de l'équipe du projet 3 |  |  |  |  |  |  | baseline start none → 2008-10-06; baseline finish none → 2008-10-06 |
| 6 | Réunion hebdomadaire de l'équipe du projet 4 |  |  |  |  |  |  | baseline start none → 2008-10-13; baseline finish none → 2008-10-13 |
| 7 | Réunion hebdomadaire de l'équipe du projet 5 |  |  |  |  |  |  | baseline start none → 2008-10-20; baseline finish none → 2008-10-20 |
| 8 | Réunion hebdomadaire de l'équipe du projet 6 |  |  |  |  |  |  | baseline start none → 2008-10-27; baseline finish none → 2008-10-27 |
| 9 | Réunion hebdomadaire de l'équipe du projet 7 |  |  |  |  |  |  | baseline start none → 2008-11-03; baseline finish none → 2008-11-03 |
| 10 | Réunion hebdomadaire de l'équipe du projet 8 |  |  |  |  |  |  | baseline start none → 2008-11-10; baseline finish none → 2008-11-10 |
| 11 | Réunion hebdomadaire de l'équipe du projet 9 |  |  |  |  |  |  | baseline start none → 2008-11-17; baseline finish none → 2008-11-17 |
| 12 | Réunion hebdomadaire de l'équipe du projet 10 |  |  |  |  |  |  | baseline start none → 2008-11-24; baseline finish none → 2008-11-24 |
| 13 | Réunion hebdomadaire de l'équipe du projet 11 |  |  |  |  |  |  | baseline start none → 2008-12-01; baseline finish none → 2008-12-01 |
| 14 | Réunion hebdomadaire de l'équipe du projet 12 |  |  |  |  |  |  | baseline start none → 2008-12-08; baseline finish none → 2008-12-08 |
| 15 | Réunion hebdomadaire de l'équipe du projet 13 |  |  |  |  |  |  | baseline start none → 2008-12-15; baseline finish none → 2008-12-15 |
| 16 | Réunion hebdomadaire de l'équipe du projet 14 |  |  |  |  |  |  | baseline start none → 2008-12-22; baseline finish none → 2008-12-22 |
| 17 | **Etude préalable** |  | 2008-10-23 A |  | 99% → 100% | 0d → none |  | baseline start none → 2008-09-22; baseline finish none → 2008-10-23 |
| 18 | Découpage prévisionnel |  |  |  |  |  |  | baseline start none → 2008-09-22; baseline finish none → 2008-09-22 |
| 19 | **Diagrammes fonctionnels (UML)** |  |  |  |  |  |  | baseline start none → 2008-09-23; baseline finish none → 2008-10-14 |
| 20 | Diagramme de classes |  |  |  |  |  |  | baseline start none → 2008-09-23; baseline finish none → 2008-10-02 |
| 21 | Diagrammes des cas d'utilisation |  |  |  |  |  |  | baseline start none → 2008-10-03; baseline finish none → 2008-10-12 |
| 22 | Diagrammes de séquence |  |  |  |  |  |  | baseline start none → 2008-10-03; baseline finish none → 2008-10-14 |
| 23 | Estimation des délais |  |  |  |  |  |  | baseline start none → 2008-09-23; baseline finish none → 2008-10-01 |
| 24 | Contraintes techniques |  |  |  |  |  |  | baseline start none → 2008-10-03; baseline finish none → 2008-10-13 |
| 25 | Ergonomie |  |  |  |  |  |  | baseline start none → 2008-10-07; baseline finish none → 2008-10-17 |
| 26 | Etude qualité |  |  |  |  |  |  | baseline start none → 2008-10-03; baseline finish none → 2008-10-16 |
| 27 | Rapport préalable |  |  |  |  |  |  | baseline start none → 2008-10-18; baseline finish none → 2008-10-22 |
| 28 | Rendus 1 | 2008-10-23 A | 2008-10-23 A |  | 0% → 100% | 0d → none |  | baseline start none → 2008-10-23; baseline finish none → 2008-10-23 |
| 29 | Retour sur le Rendu 1 | 2008-11-03 A | 2008-11-03 A |  | 0% → 100% | 4d → none |  | baseline start none → 2008-11-03; baseline finish none → 2008-11-03 |
| 30 | **Etude technique** | 2008-10-24 A |  |  | 0% → 36% |  |  | baseline start none → 2008-10-24; baseline finish none → 2008-11-20 |
| 31 | Description des modules | 2008-10-24 A |  |  | 0% → 50% | 14.5d → 19.5d |  | baseline start none → 2008-10-24; baseline finish none → 2008-10-28 |
| 32 | **Mise à jour des diagrammes** |  |  |  |  |  |  | baseline start none → 2008-11-03; baseline finish none → 2008-11-06 |
| 33 | Diagramme de classes |  |  |  |  |  |  | baseline start none → 2008-11-03; baseline finish none → 2008-11-06 |
| 34 | Diagrammes des cas d'utilisation |  |  |  |  |  |  | baseline start none → 2008-11-04; baseline finish none → 2008-11-05 |
| 35 | Diagrammes de séquence |  |  |  |  |  |  | baseline start none → 2008-11-04; baseline finish none → 2008-11-06 |
| 36 | Spécification des plans de test |  |  |  |  |  |  | baseline start none → 2008-11-07; baseline finish none → 2008-11-12 |
| 37 | Algorithme de calcul | 2008-10-24 A | 2008-11-02 A |  | 0% → 100% | 14.5d → none |  | baseline start none → 2008-10-24; baseline finish none → 2008-11-02 |
| 38 | Plan de développement | 2008-10-29 → 2008-10-28 A (-1d) | 2008-11-02 → 2008-10-28 A (-5d) | 5d → 0d | 0% → 100% | 14.5d → none |  | baseline start none → 2008-10-29; baseline finish none → 2008-11-02 |
| 39 | Mise à jour du Planning |  |  |  |  |  |  | resources Pierrick [50%] → Tony [50%]; baseline start none → 2008-11-04; baseline finish none → 2008-11-05 |
| 40 | PAQ complété |  |  |  |  |  |  | baseline start none → 2008-11-14; baseline finish none → 2008-11-17 |
| 41 | Rendu 2 |  |  |  |  |  |  | baseline start none → 2008-11-20; baseline finish none → 2008-11-20 |
| 42 | Retour sur le rendu 2 |  |  |  |  | 53d → 3d |  | baseline start none → 2008-11-24; baseline finish none → 2008-11-24 |
| 43 | **Réalisation** | 2008-11-21 → 2008-11-25 (+4d) | 2008-12-10 → 2008-12-24 (+14d) | 20d → 30d? |  | 3.5d → 3d |  | baseline start none → 2008-11-21; baseline finish none → 2008-12-10 |
| 44 | **Codage** | 2008-11-21 → 2008-11-25 (+4d) | 2008-11-30 → 2008-12-14 (+14d) | 10d → 20d? |  | 3.5d → 3d | 41 → 42 | resources Bryan [50%]; Elodie [50%]; Pierrick [50%]; Remi [50%]; Tony [50%] → none; baseline start none → 2008-11-21; baseline finish none → 2008-11-30 |
| 49 | **Documentations** | 2008-12-01 → 2008-12-15 (+14d) | 2008-12-10 → 2008-12-24 (+14d) | 10d → 10d? |  | 25d → 11d |  | constraint start no earlier than 2008-11-30 → none; resources Bryan [50%]; Elodie [50%]; Pierrick [50%]; Remi [50%]; Tony [50%] → none; baseline start none → 2008-12-01; baseline finish none → 2008-12-10 |
| 54 | **Tests unitaires** | 2008-11-21 → 2008-11-25 (+4d) | 2008-11-30 → 2008-12-14 (+14d) | 10d → 20d? |  | 12.5d → 12d |  | resources Bryan [50%]; Elodie [50%]; Pierrick [50%]; Remi [50%]; Tony [50%] → none; baseline start none → 2008-11-21; baseline finish none → 2008-11-30 |
| 59 | Plan de recettes | 2008-12-01 → 2008-12-15 (+14d) | 2008-12-10 → 2008-12-24 (+14d) |  |  | 20.5d → 6.5d |  | baseline start none → 2008-12-01; baseline finish none → 2008-12-10 |
| 60 | Plan mise en œuvre utilisateur | 2008-12-01 → 2008-12-15 (+14d) | 2008-12-09 → 2008-12-23 (+14d) |  |  | 3.5d → 3d |  | baseline start none → 2008-12-01; baseline finish none → 2008-12-09 |
| 61 | **Mise en œuvre** | 2008-12-10 → 2008-12-24 (+14d) |  | 22.5d → 9d |  | 3.5d → 3d |  | baseline start none → 2008-12-10; baseline finish none → 2009-01-12 |
| 62 | Test d'integration | 2008-12-10 → 2008-12-24 (+14d) | 2008-12-14 → 2009-01-05 (+22d) | 5d → 2d |  | 3.5d → 3d |  | resources Bryan; Elodie; Pierrick; Remi; Tony → Pierrick; Tony; baseline start none → 2008-12-10; baseline finish none → 2008-12-14 |
| 63 | Generalisation | 2008-12-15 → 2009-01-06 (+22d) |  | 12.5d → 2d |  | 3.5d → 3d |  | resources Bryan; Elodie; Pierrick; Remi; Tony → Remi; baseline start none → 2008-12-15; baseline finish none → 2009-01-07 |
| 64 | PV de recette | 2009-01-07 → 2009-01-08 (+1d) |  |  |  | 3.5d → 3d |  | resources Bryan; Elodie; Pierrick; Remi; Tony → Elodie; baseline start none → 2009-01-07; baseline finish none → 2009-01-12 |
| 65 | Rendu final |  |  |  |  |  |  | baseline start none → 2009-01-15; baseline finish none → 2009-01-15 |
| 66 | Préparation soutenance |  |  |  |  |  |  | baseline start none → 2009-01-20; baseline finish none → 2009-01-24 |
| 67 | Soutenance |  |  |  |  |  |  | baseline start none → 2009-01-27; baseline finish none → 2009-01-27 |
