# Rapport comparatif

How a schedule from MS Project changed from version to version. A marks actual dates.

## Version 1 (saved 2009-01-25, file iGo_Comparatif_v2.0_v3.0.mpp)

| ID | WBS | Task | Duration | Start | Finish | Total float |
| --- | --- | --- | --- | --- | --- | --- |
| 1 | 1 | **Projet** | 1d? | 2008-09-22 | 2008-09-22 | 0d |
| 2 | 1.1 | **Réunion hebdomadaire de l'équipe du projet** | 1d? | 2008-09-22 | 2008-09-22 | 0d |
| 3 |  | Réunion hebdomadaire de l'équipe du projet 1 | 1d? | 2008-09-22 | 2008-09-22 | 0d |
| 4 |  | Réunion hebdomadaire de l'équipe du projet 2 | 1d? | 2008-09-22 | 2008-09-22 | 0d |
| 5 |  | Réunion hebdomadaire de l'équipe du projet 3 | 1d? | 2008-09-22 | 2008-09-22 | 0d |
| 6 |  | Réunion hebdomadaire de l'équipe du projet 4 | 1d? | 2008-09-22 | 2008-09-22 | 0d |
| 7 |  | Réunion hebdomadaire de l'équipe du projet 5 | 1d? | 2008-09-22 | 2008-09-22 | 0d |
| 8 |  | Réunion hebdomadaire de l'équipe du projet 6 | 1d? | 2008-09-22 | 2008-09-22 | 0d |
| 9 |  | Réunion hebdomadaire de l'équipe du projet 7 | 1d? | 2008-09-22 | 2008-09-22 | 0d |
| 10 |  | Réunion hebdomadaire de l'équipe du projet 8 | 1d? | 2008-09-22 | 2008-09-22 | 0d |
| 11 |  | Réunion hebdomadaire de l'équipe du projet 9 | 1d? | 2008-09-22 | 2008-09-22 | 0d |
| 12 |  | Réunion hebdomadaire de l'équipe du projet 10 | 1d? | 2008-09-22 | 2008-09-22 | 0d |
| 13 |  | Réunion hebdomadaire de l'équipe du projet 11 | 1d? | 2008-09-22 | 2008-09-22 | 0d |
| 14 |  | Réunion hebdomadaire de l'équipe du projet 12 | 1d? | 2008-09-22 | 2008-09-22 | 0d |
| 15 |  | Réunion hebdomadaire de l'équipe du projet 13 | 1d? | 2008-09-22 | 2008-09-22 | 0d |
| 16 |  | Réunion hebdomadaire de l'équipe du projet 14 | 1d? | 2008-09-22 | 2008-09-22 | 0d |
| 17 | 1.2 | **Etude préalable** | 1d? | 2008-09-22 | 2008-09-22 | 0d |
| 18 |  | Découpage prévisionnel | 1d? | 2008-09-22 | 2008-09-22 | 0d |
| 19 | 1.2.2 | **Diagrammes fonctionnels (UML)** | 1d? | 2008-09-22 | 2008-09-22 | 0d |
| 20 |  | Diagramme de classes | 1d? | 2008-09-22 | 2008-09-22 | 0d |
| 21 |  | Diagrammes des cas d'utilisation | 1d? | 2008-09-22 | 2008-09-22 | 0d |
| 22 |  | Diagrammes de séquence | 1d? | 2008-09-22 | 2008-09-22 | 0d |
| 23 |  | Estimation des délais | 1d? | 2008-09-22 | 2008-09-22 | 0d |
| 24 |  | Contraintes techniques | 1d? | 2008-09-22 | 2008-09-22 | 0d |
| 25 |  | Ergonomie | 1d? | 2008-09-22 | 2008-09-22 | 0d |
| 26 |  | Etude qualité | 1d? | 2008-09-22 | 2008-09-22 | 0d |
| 27 |  | Rapport préalable | 1d? | 2008-09-22 | 2008-09-22 | 0d |
| 28 |  | Rendus 1 | 1d? | 2008-09-22 | 2008-09-22 | 0d |
| 29 |  | Retour sur le Rendu 1 | 1d? | 2008-09-22 | 2008-09-22 | 0d |
| 30 | 1.4 | **Etude technique** | 1d? | 2008-09-22 | 2008-09-22 | 0d |
| 31 |  | Description des modules | 1d? | 2008-09-22 | 2008-09-22 | 0d |
| 32 | 1.4.2 | **Mise à jour des diagrammes** | 1d? | 2008-09-22 | 2008-09-22 | 0d |
| 33 |  | Diagramme de classes | 1d? | 2008-09-22 | 2008-09-22 | 0d |
| 34 |  | Diagrammes des cas d'utilisation | 1d? | 2008-09-22 | 2008-09-22 | 0d |
| 35 |  | Diagrammes de séquence | 1d? | 2008-09-22 | 2008-09-22 | 0d |
| 36 |  | plans de test | 1d? | 2008-09-22 | 2008-09-22 | 0d |
| 37 |  | Algorithme de calcul | 1d? | 2008-09-22 | 2008-09-22 | 0d |
| 38 |  | Plan de développement | 1d? | 2008-09-22 | 2008-09-22 | 0d |
| 39 |  | Mise à jour du Planning | 1d? | 2008-09-22 | 2008-09-22 | 0d |
| 40 |  | PAQ complété | 1d? | 2008-09-22 | 2008-09-22 | 0d |
| 41 |  | Rendu 2 | 1d? | 2008-09-22 | 2008-09-22 | 0d |
| 42 |  | Retour sur le rendu 2 | 1d? | 2008-09-22 | 2008-09-22 | 0d |
| 43 | 1.6 | **Réalisation** | 1d? | 2008-09-22 | 2008-09-22 | 0d |
| 44 | 1.6.1 | **Codage** | 1d? | 2008-09-22 | 2008-09-22 | 0d |
| 45 |  | StreamInFolder(event) | 1d? | 2008-09-22 | 2008-09-22 | 0d |
| 46 |  | Algo | 1d? | 2008-09-22 | 2008-09-22 | 0d |
| 47 |  | graphNetwork | 1d? | 2008-09-22 | 2008-09-22 | 0d |
| 48 |  | iGoMaster | 1d? | 2008-09-22 | 2008-09-22 | 0d |
| 49 |  | main | 1d? | 2008-09-22 | 2008-09-22 | 0d |
| 50 |  | IHM | 1d? | 2008-09-22 | 2008-09-22 | 0d |
| 51 |  | XmlFeature | 1d? | 2008-09-22 | 2008-09-22 | 0d |
| 52 | 1.6.2 | **Documentations** | 1d? | 2008-09-22 | 2008-09-22 | 0d |
| 53 |  | StreamInFolder(event) | 1d? | 2008-09-22 | 2008-09-22 | 0d |
| 54 |  | Algo | 1d? | 2008-09-22 | 2008-09-22 | 0d |
| 55 |  | graphNetwork | 1d? | 2008-09-22 | 2008-09-22 | 0d |
| 56 |  | iGoMaster | 1d? | 2008-09-22 | 2008-09-22 | 0d |
| 57 |  | main | 1d? | 2008-09-22 | 2008-09-22 | 0d |
| 58 |  | IHM | 1d? | 2008-09-22 | 2008-09-22 | 0d |
| 59 |  | XmlFeature | 1d? | 2008-09-22 | 2008-09-22 | 0d |
| 60 | 1.6.3 | **Tests unitaires** | 1d? | 2008-09-22 | 2008-09-22 | 0d |
| 61 |  | StreamInFolder(event) | 1d? | 2008-09-22 | 2008-09-22 | 0d |
| 62 |  | Algo | 1d? | 2008-09-22 | 2008-09-22 | 0d |
| 63 |  | graphNetwork | 1d? | 2008-09-22 | 2008-09-22 | 0d |
| 64 |  | iGoMaster | 1d? | 2008-09-22 | 2008-09-22 | 0d |
| 65 |  | main | 1d? | 2008-09-22 | 2008-09-22 | 0d |
| 66 |  | IHM | 1d? | 2008-09-22 | 2008-09-22 | 0d |
| 67 |  | XmlFeature | 1d? | 2008-09-22 | 2008-09-22 | 0d |
| 68 |  | Plan de recettes | 1d? | 2008-09-22 | 2008-09-22 | 0d |
| 69 |  | Plan mise en œuvre utilisateur | 1d? | 2008-09-22 | 2008-09-22 | 0d |
| 70 | 1.7 | **Mise en œuvre** | 1d? | 2008-09-22 | 2008-09-22 | 0d |

| ID | Task | Duration | Start | Finish | Total float |
| --- | --- | --- | --- | --- | --- |
| 71 | Test d'integration | 1d? | 2008-09-22 | 2008-09-22 | 0d |
| 72 | Generalisation | 1d? | 2008-09-22 | 2008-09-22 | 0d |
| 73 | PV de recette | 1d? | 2008-09-22 | 2008-09-22 | 0d |
| 74 | Rendu final | 1d? | 2008-09-22 | 2008-09-22 | 0d |
| 75 | Préparation soutenance | 1d? | 2008-09-22 | 2008-09-22 | 0d |
| 76 | Soutenance | 1d? | 2008-09-22 | 2008-09-22 | 0d |

## Version 2 (data date 2008-10-21, saved 2009-01-25, file iGo_WBS_v3.0.mpp)

Last finish 2008-09-22 → 2009-01-27 (+127d). Complete tasks 0 → 62.

Changed:

| ID | Task | Start | Finish | Duration | Complete | Total float | Predecessors | Other |
| --- | --- | --- | --- | --- | --- | --- | --- | --- |
| 1 | **Projet** | 2008-09-22 A | 2008-09-22 → 2009-01-27 (+127d) | 1d? → 117d? | 0% → 99% |  |  | baseline start none → 2008-09-22; baseline finish none → 2009-01-27 |
| 2 | **Réunion hebdomadaire de l'équipe du projet** | 2008-09-22 A | 2008-09-22 → 2008-12-22 A (+91d) | 1d? → 91d | 0% → 100% | 0d → none |  | baseline start none → 2008-09-22; baseline finish none → 2008-12-22 |
| 3 | Réunion hebdomadaire de l'équipe du projet 1 | 2008-09-22 A | 2008-09-22 A | 1d? → 0d | 0% → 100% | 0d → none |  | constraint none → start no earlier than 2008-09-22; baseline start none → 2008-09-22; baseline finish none → 2008-09-22 |
| 4 | Réunion hebdomadaire de l'équipe du projet 2 | 2008-09-22 → 2008-09-29 A (+7d) | 2008-09-22 → 2008-09-29 A (+7d) | 1d? → 0d | 0% → 100% | 0d → none |  | constraint none → start no earlier than 2008-09-29; baseline start none → 2008-09-29; baseline finish none → 2008-09-29 |
| 5 | Réunion hebdomadaire de l'équipe du projet 3 | 2008-09-22 → 2008-10-06 A (+14d) | 2008-09-22 → 2008-10-06 A (+14d) | 1d? → 0d | 0% → 100% | 0d → none |  | constraint none → start no earlier than 2008-10-06; baseline start none → 2008-10-06; baseline finish none → 2008-10-06 |
| 6 | Réunion hebdomadaire de l'équipe du projet 4 | 2008-09-22 → 2008-10-13 A (+21d) | 2008-09-22 → 2008-10-13 A (+21d) | 1d? → 0d | 0% → 100% | 0d → none |  | constraint none → start no earlier than 2008-10-13; baseline start none → 2008-10-13; baseline finish none → 2008-10-13 |
| 7 | Réunion hebdomadaire de l'équipe du projet 5 | 2008-09-22 → 2008-10-20 A (+28d) | 2008-09-22 → 2008-10-20 A (+28d) | 1d? → 0d | 0% → 100% | 0d → none |  | constraint none → start no earlier than 2008-10-20; baseline start none → 2008-10-20; baseline finish none → 2008-10-20 |
| 8 | Réunion hebdomadaire de l'équipe du projet 6 | 2008-09-22 → 2008-10-27 A (+35d) | 2008-09-22 → 2008-10-27 A (+35d) | 1d? → 0d | 0% → 100% | 0d → none |  | constraint none → start no earlier than 2008-10-27; baseline start none → 2008-10-27; baseline finish none → 2008-10-27 |
| 9 | Réunion hebdomadaire de l'équipe du projet 7 | 2008-09-22 → 2008-11-03 A (+42d) | 2008-09-22 → 2008-11-03 A (+42d) | 1d? → 0d | 0% → 100% | 0d → none |  | constraint none → start no earlier than 2008-11-03; baseline start none → 2008-11-03; baseline finish none → 2008-11-03 |
| 10 | Réunion hebdomadaire de l'équipe du projet 8 | 2008-09-22 → 2008-11-10 A (+49d) | 2008-09-22 → 2008-11-10 A (+49d) | 1d? → 0d | 0% → 100% | 0d → none |  | constraint none → start no earlier than 2008-11-10; baseline start none → 2008-11-10; baseline finish none → 2008-11-10 |
| 11 | Réunion hebdomadaire de l'équipe du projet 9 | 2008-09-22 → 2008-11-17 A (+56d) | 2008-09-22 → 2008-11-17 A (+56d) | 1d? → 0d | 0% → 100% | 0d → none |  | constraint none → start no earlier than 2008-11-17; baseline start none → 2008-11-17; baseline finish none → 2008-11-17 |
| 12 | Réunion hebdomadaire de l'équipe du projet 10 | 2008-09-22 → 2008-11-24 A (+63d) | 2008-09-22 → 2008-11-24 A (+63d) | 1d? → 0d | 0% → 100% | 0d → none |  | constraint none → start no earlier than 2008-11-24; baseline start none → 2008-11-24; baseline finish none → 2008-11-24 |
| 13 | Réunion hebdomadaire de l'équipe du projet 11 | 2008-09-22 → 2008-12-01 A (+70d) | 2008-09-22 → 2008-12-01 A (+70d) | 1d? → 0d | 0% → 100% | 0d → none |  | constraint none → start no earlier than 2008-12-01; baseline start none → 2008-12-01; baseline finish none → 2008-12-01 |
| 14 | Réunion hebdomadaire de l'équipe du projet 12 | 2008-09-22 → 2008-12-08 A (+77d) | 2008-09-22 → 2008-12-08 A (+77d) | 1d? → 0d | 0% → 100% | 0d → none |  | constraint none → start no earlier than 2008-12-08; baseline start none → 2008-12-08; baseline finish none → 2008-12-08 |
| 15 | Réunion hebdomadaire de l'équipe du projet 13 | 2008-09-22 → 2008-12-15 A (+84d) | 2008-09-22 → 2008-12-15 A (+84d) | 1d? → 0d | 0% → 100% | 0d → none |  | constraint none → start no earlier than 2008-12-15; baseline start none → 2008-12-15; baseline finish none → 2008-12-15 |
| 16 | Réunion hebdomadaire de l'équipe du projet 14 | 2008-09-22 → 2008-12-22 A (+91d) | 2008-09-22 → 2008-12-22 A (+91d) | 1d? → 0d | 0% → 100% | 0d → none |  | constraint none → start no earlier than 2008-12-22; baseline start none → 2008-12-22; baseline finish none → 2008-12-22 |
| 17 | **Etude préalable** | 2008-09-22 A | 2008-09-22 → 2008-10-23 A (+31d) | 1d? → 32d | 0% → 100% | 0d → none |  | baseline start none → 2008-09-22; baseline finish none → 2008-10-23 |
| 18 | Découpage prévisionnel | 2008-09-22 A | 2008-09-22 A | 1d? → 1d | 0% → 100% | 0d → none |  | resources none → Remi; Elodie; Bryan; Tony; Pierrick; baseline start none → 2008-09-22; baseline finish none → 2008-09-22 |
| 19 | **Diagrammes fonctionnels (UML)** | 2008-09-22 → 2008-09-23 A (+1d) | 2008-09-22 → 2008-10-14 A (+22d) | 1d? → 22d | 0% → 100% | 0d → none |  | baseline start none → 2008-09-23; baseline finish none → 2008-10-14 |
| 20 | Diagramme de classes | 2008-09-22 → 2008-09-23 A (+1d) | 2008-09-22 → 2008-10-02 A (+10d) | 1d? → 10d | 0% → 100% | 0d → none | none → 18 | resources none → Bryan [50%]; Elodie [50%]; Remi [50%]; baseline start none → 2008-09-23; baseline finish none → 2008-10-02 |
| 21 | Diagrammes des cas d'utilisation | 2008-09-22 → 2008-10-03 A (+11d) | 2008-09-22 → 2008-10-12 A (+20d) | 1d? → 10d | 0% → 100% | 0d → none | none → 20 | resources none → Pierrick [50%]; Remi [50%]; baseline start none → 2008-10-03; baseline finish none → 2008-10-12 |
| 22 | Diagrammes de séquence | 2008-09-22 → 2008-10-03 A (+11d) | 2008-09-22 → 2008-10-14 A (+22d) | 1d? → 10d | 0% → 100% | 0d → none | none → 20 | resources none → Tony [50%]; Elodie; Bryan [50%]; baseline start none → 2008-10-03; baseline finish none → 2008-10-14 |
| 23 | Estimation des délais | 2008-09-22 → 2008-09-23 A (+1d) | 2008-09-22 → 2008-10-01 A (+9d) | 1d? → 9d | 0% → 100% | 0d → none | none → 18 | constraint none → start no earlier than 2008-09-22; resources none → Tony [50%]; Pierrick [50%]; baseline start none → 2008-09-23; baseline finish none → 2008-10-01 |
| 24 | Contraintes techniques | 2008-09-22 → 2008-10-03 A (+11d) | 2008-09-22 → 2008-10-13 A (+21d) | 1d? → 11d | 0% → 100% | 0d → none |  | constraint none → start no earlier than 2008-10-03; resources none → Bryan [50%]; Remi [50%]; baseline start none → 2008-10-03; baseline finish none → 2008-10-13 |
| 25 | Ergonomie | 2008-09-22 → 2008-10-07 A (+15d) | 2008-09-22 → 2008-10-17 A (+25d) | 1d? → 11d | 0% → 100% | 0d → none |  | constraint none → start no earlier than 2008-10-07; resources none → Bryan [50%]; Pierrick [50%]; Remi [50%]; baseline start none → 2008-10-07; baseline finish none → 2008-10-17 |
| 26 | Etude qualité | 2008-09-22 → 2008-10-03 A (+11d) | 2008-09-22 → 2008-10-16 A (+24d) | 1d? → 12d | 0% → 100% | 0d → none |  | constraint none → start no earlier than 2008-10-03; resources none → Elodie [50%]; Tony [50%]; baseline start none → 2008-10-03; baseline finish none → 2008-10-16 |
| 27 | Rapport préalable | 2008-09-22 → 2008-10-18 A (+26d) | 2008-09-22 → 2008-10-22 A (+30d) | 1d? → 5d | 0% → 100% | 0d → none | none → 18, 23, 24, 26, 25, 21, 22 | constraint none → start no earlier than 2008-10-16; resources none → Remi; Elodie; Bryan; Tony; Pierrick; baseline start none → 2008-10-18; baseline finish none → 2008-10-22 |
| 28 | Rendus 1 | 2008-09-22 → 2008-10-23 A (+31d) | 2008-09-22 → 2008-10-23 A (+31d) | 1d? → 0d | 0% → 100% | 0d → none | none → 27 | constraint none → must start on 2008-10-23; baseline start none → 2008-10-23; baseline finish none → 2008-10-23 |
| 29 | Retour sur le Rendu 1 | 2008-09-22 → 2008-11-03 A (+42d) | 2008-09-22 → 2008-11-03 A (+42d) | 1d? → 0d | 0% → 100% | 0d → none |  | constraint none → start no earlier than 2008-11-03; baseline start none → 2008-11-03; baseline finish none → 2008-11-03 |
| 30 | **Etude technique** | 2008-09-22 → 2008-10-24 A (+32d) | 2008-09-22 → 2008-11-20 A (+59d) | 1d? → 28d | 0% → 100% | 0d → none |  | baseline start none → 2008-10-24; baseline finish none → 2008-11-20 |
| 31 | Description des modules | 2008-09-22 → 2008-10-24 A (+32d) | 2008-09-22 → 2008-10-28 A (+36d) | 1d? → 5d | 0% → 100% | 0d → none | none → 28 | resources none → Pierrick; Elodie; Remi; baseline start none → 2008-10-24; baseline finish none → 2008-10-28 |
| 32 | **Mise à jour des diagrammes** | 2008-09-22 → 2008-11-03 A (+42d) | 2008-09-22 → 2008-11-06 A (+45d) | 1d? → 3d | 0% → 100% | 0d → none |  | baseline start none → 2008-11-03; baseline finish none → 2008-11-06 |
| 33 | Diagramme de classes | 2008-09-22 → 2008-11-03 A (+42d) | 2008-09-22 → 2008-11-06 A (+45d) | 1d? → 3d | 0% → 100% | 0d → none | none → 29 | resources none → Bryan [50%]; Tony [50%]; Elodie [50%]; baseline start none → 2008-11-03; baseline finish none → 2008-11-06 |
| 34 | Diagrammes des cas d'utilisation | 2008-09-22 → 2008-11-04 A (+43d) | 2008-09-22 → 2008-11-05 A (+44d) | 1d? → 2d | 0% → 100% | 0d → none | none → 29 | resources none → Pierrick [50%]; Remi [50%]; baseline start none → 2008-11-04; baseline finish none → 2008-11-05 |
| 35 | Diagrammes de séquence | 2008-09-22 → 2008-11-04 A (+43d) | 2008-09-22 → 2008-11-06 A (+45d) | 1d? → 3d | 0% → 100% | 0d → none | none → 29 | constraint none → start no earlier than 2008-11-04; resources none → Tony [50%]; Elodie [50%]; Bryan [50%]; baseline start none → 2008-11-04; baseline finish none → 2008-11-06 |
| 36 | plans de test | 2008-09-22 → 2008-11-07 A (+46d) | 2008-09-22 → 2008-11-12 A (+51d) | 1d? → 6d | 0% → 100% | 0d → none | none → 33 | resources none → Bryan [50%]; Elodie [50%]; Remi [50%]; Pierrick [50%]; Tony; baseline start none → 2008-11-07; baseline finish none → 2008-11-12 |
| 37 | Algorithme de calcul | 2008-09-22 → 2008-10-24 A (+32d) | 2008-09-22 → 2008-11-02 A (+41d) | 1d? → 10d | 0% → 100% | 0d → none | none → 28 | resources none → Bryan; Tony; baseline start none → 2008-10-24; baseline finish none → 2008-11-02 |
| 38 | Plan de développement | 2008-09-22 → 2008-10-28 A (+36d) | 2008-09-22 → 2008-10-28 A (+36d) | 1d? → 0d | 0% → 100% | 0d → none | none → 31 | resources none → Pierrick; Elodie; Remi; baseline start none → 2008-10-29; baseline finish none → 2008-11-02 |
| 39 | Mise à jour du Planning | 2008-09-22 → 2008-11-04 A (+43d) | 2008-09-22 → 2008-11-05 A (+44d) | 1d? → 2d | 0% → 100% | 0d → none |  | constraint none → start no earlier than 2008-11-04; resources none → Tony [33%]; baseline start none → 2008-11-04; baseline finish none → 2008-11-05 |
| 40 | PAQ complété | 2008-09-22 → 2008-11-14 A (+53d) | 2008-09-22 → 2008-11-17 A (+56d) | 1d? → 3.5d | 0% → 100% | 0d → none | none → 31, 36, 39, 38, 37, 35, 34 | constraint none → start no earlier than 2008-11-14; resources none → Bryan; Elodie; Pierrick; Remi; Tony; baseline start none → 2008-11-14; baseline finish none → 2008-11-17 |
| 41 | Rendu 2 | 2008-09-22 → 2008-11-20 A (+59d) | 2008-09-22 → 2008-11-20 A (+59d) | 1d? → 0d | 0% → 100% | 0d → none | none → 40 | constraint none → must start on 2008-11-20; baseline start none → 2008-11-20; baseline finish none → 2008-11-20 |
| 42 | Retour sur le rendu 2 | 2008-09-22 → 2008-11-24 A (+63d) | 2008-09-22 → 2008-11-24 A (+63d) | 1d? → 0d | 0% → 100% | 0d → none |  | constraint none → start no earlier than 2008-11-24; baseline start none → 2008-11-24; baseline finish none → 2008-11-24 |
| 43 | **Réalisation** | 2008-09-22 → 2008-11-25 A (+64d) | 2008-09-22 → 2009-01-09 A (+109d) | 1d? → 34.5d? | 0% → 100% | 0d → none |  | baseline start none → 2008-11-21; baseline finish none → 2008-12-10 |
| 44 | **Codage** | 2008-09-22 → 2008-11-25 A (+64d) | 2008-09-22 → 2009-01-09 A (+109d) | 1d? → 34.5d? | 0% → 100% | 0d → none | none → 42 | baseline start none → 2008-11-21; baseline finish none → 2008-11-30 |
| 45 | StreamInFolder(event) | 2008-09-22 → 2008-11-25 A (+64d) | 2008-09-22 → 2009-01-06 A (+106d) | 1d? → 32d | 0% → 100% | 0d → none |  | resources none → Pierrick [50%] |
| 46 | Algo | 2008-09-22 → 2008-11-25 A (+64d) | 2008-09-22 → 2009-01-06 A (+106d) | 1d? → 32d | 0% → 100% | 0d → none |  | resources none → Tony [33%] |
| 47 | graphNetwork | 2008-09-22 → 2008-11-25 A (+64d) | 2008-09-22 → 2009-01-06 A (+106d) | 1d? → 32d | 0% → 100% | 0d → none |  | resources none → Remi [33%] |
| 48 | iGoMaster | 2008-09-22 → 2008-11-25 A (+64d) | 2008-09-22 → 2009-01-09 A (+109d) | 1d? → 32.5d | 0% → 100% | 0d → none |  | resources none → Elodie [33%] |
| 49 | main | 2008-09-22 → 2008-11-25 A (+64d) | 2008-09-22 → 2009-01-08 A (+108d) | 1d? → 32d | 0% → 100% | 0d → none |  | constraint none → finish no earlier than 2009-01-07; resources none → Elodie [33%] |
| 50 | IHM | 2008-09-22 → 2008-11-25 A (+64d) | 2008-09-22 → 2009-01-06 A (+106d) | 1d? → 32d? | 0% → 100% | 0d → none |  | resources none → Bryan [33%] |
| 51 | XmlFeature | 2008-09-22 → 2008-11-25 A (+64d) | 2008-09-22 → 2009-01-08 A (+108d) | 1d? → 34d? | 0% → 100% | 0d → none |  | resources none → Bryan [33%] |
| 52 | **Documentations** | 2008-09-22 → 2008-12-17 A (+86d) | 2008-09-22 → 2009-01-06 A (+106d) | 1d? → 10d? | 0% → 100% | 0d → none | none → 44 | baseline start none → 2008-12-01; baseline finish none → 2008-12-10 |
| 53 | StreamInFolder(event) | 2008-09-22 → 2008-12-17 A (+86d) | 2008-09-22 → 2009-01-06 A (+106d) | 1d? → 10d? | 0% → 100% | 0d → none |  | resources none → Pierrick [50%] |
| 54 | Algo | 2008-09-22 → 2008-12-17 A (+86d) | 2008-09-22 → 2009-01-06 A (+106d) | 1d? → 10d? | 0% → 100% | 0d → none |  | resources none → Tony [50%] |
| 55 | graphNetwork | 2008-09-22 → 2008-12-17 A (+86d) | 2008-09-22 → 2009-01-06 A (+106d) | 1d? → 10d? | 0% → 100% | 0d → none |  | resources none → Remi |
| 56 | iGoMaster | 2008-09-22 → 2008-12-17 A (+86d) | 2008-09-22 → 2009-01-06 A (+106d) | 1d? → 10d? | 0% → 100% | 0d → none |  | resources none → Elodie [50%] |
| 57 | main | 2008-09-22 → 2008-12-17 A (+86d) | 2008-09-22 → 2009-01-06 A (+106d) | 1d? → 10d? | 0% → 100% | 0d → none |  | resources none → Elodie [33%] |
| 58 | IHM | 2008-09-22 → 2008-12-17 A (+86d) | 2008-09-22 → 2009-01-06 A (+106d) | 1d? → 10d? | 0% → 100% | 0d → none |  | resources none → Bryan [50%] |
| 59 | XmlFeature | 2008-09-22 → 2008-12-17 A (+86d) | 2008-09-22 → 2009-01-06 A (+106d) | 1d? → 10d? | 0% → 100% | 0d → none |  | resources none → Bryan [50%] |
| 60 | **Tests unitaires** | 2008-09-22 → 2008-11-25 A (+64d) | 2008-09-22 → 2009-01-07 A (+107d) | 1d? → 33d | 0% → 100% | 0d → none | none → 44SS | baseline start none → 2008-11-21; baseline finish none → 2008-11-30 |
| 61 | StreamInFolder(event) | 2008-09-22 → 2008-11-25 A (+64d) | 2008-09-22 → 2008-12-24 A (+93d) | 1d? → 20d | 0% → 100% | 0d → none |  | resources none → Remi [33%] |
| 62 | Algo | 2008-09-22 → 2008-11-25 A (+64d) | 2008-09-22 → 2008-12-24 A (+93d) | 1d? → 20d | 0% → 100% | 0d → none |  | resources none → Elodie [33%] |
| 63 | graphNetwork | 2008-09-22 → 2008-11-25 A (+64d) | 2008-09-22 → 2008-12-23 A (+92d) | 1d? → 20d | 0% → 100% | 0d → none |  | resources none → Bryan [33%] |
| 64 | iGoMaster | 2008-09-22 → 2008-11-25 A (+64d) | 2008-09-22 → 2008-12-23 A (+92d) | 1d? → 20d | 0% → 100% | 0d → none |  | resources none → Tony [33%] |
| 65 | main | 2008-09-22 → 2008-11-25 A (+64d) | 2008-09-22 → 2009-01-07 A (+107d) | 1d? → 20d | 0% → 100% | 0d → none |  | resources none → Tony [33%] |
| 66 | IHM | 2008-09-22 → 2008-11-25 A (+64d) | 2008-09-22 → 2008-12-23 A (+92d) | 1d? → 20d | 0% → 100% | 0d → none |  | resources none → Pierrick [50%] |
| 67 | XmlFeature | 2008-09-22 → 2008-11-25 A (+64d) | 2008-09-22 → 2008-12-14 A (+83d) | 1d? → 20d | 0% → 100% | 0d → none |  | resources none → Remi [33%] |
| 68 | Plan de recettes | 2008-09-22 → 2008-12-17 A (+86d) | 2008-09-22 → 2009-01-06 A (+106d) | 1d? → 9.5d | 0% → 100% | 0d → none | none → 44 | resources none → Tony [50%]; Elodie [50%]; baseline start none → 2008-12-01; baseline finish none → 2008-12-10 |
| 69 | Plan mise en œuvre utilisateur | 2008-09-22 → 2008-12-17 A (+86d) | 2008-09-22 → 2009-01-05 A (+105d) | 1d? → 9d | 0% → 100% | 0d → none | none → 44 | constraint none → start no earlier than 2008-12-01; resources none → Pierrick [50%]; Bryan [33%]; Remi [50%]; baseline start none → 2008-12-01; baseline finish none → 2008-12-09 |
| 70 | **Mise en œuvre** | 2008-09-22 → 2008-12-24 A (+93d) | 2008-09-22 → 2009-01-14 A (+114d) | 1d? → 11d | 0% → 100% | 0d → none |  | baseline start none → 2008-12-10; baseline finish none → 2009-01-12 |

| ID | Task | Start | Finish | Duration | Complete | Total float | Predecessors | Other |
| --- | --- | --- | --- | --- | --- | --- | --- | --- |
| 71 | Test d'integration | 2008-09-22 → 2008-12-24 A (+93d) | 2008-09-22 → 2009-01-07 A (+107d) | 1d? → 4d | 0% → 100% | 0d → none |  | constraint none → start no earlier than 2008-12-24; resources none → Pierrick; Tony; baseline start none → 2008-12-10; baseline finish none → 2008-12-14 |
| 72 | Generalisation | 2008-09-22 → 2009-01-08 A (+108d) | 2008-09-22 → 2009-01-09 A (+109d) | 1d? → 2d | 0% → 100% | 0d → none | none → 71 | resources none → Remi; baseline start none → 2008-12-15; baseline finish none → 2009-01-07 |
| 73 | PV de recette | 2008-09-22 → 2009-01-10 A (+110d) | 2008-09-22 → 2009-01-14 A (+114d) | 1d? → 5d | 0% → 100% | 0d → none | none → 72, 68 | resources none → Elodie; baseline start none → 2009-01-07; baseline finish none → 2009-01-12 |
| 74 | Rendu final | 2008-09-22 → 2009-01-15 (+115d) | 2008-09-22 → 2009-01-15 (+115d) | 1d? → 0d |  |  | none → 52, 73, 71 | constraint none → must start on 2009-01-15; baseline start none → 2009-01-15; baseline finish none → 2009-01-15 |
| 75 | Préparation soutenance | 2008-09-22 → 2009-01-20 (+120d) | 2008-09-22 → 2009-01-24 (+124d) | 1d? → 5d |  | 0d → 3d | none → 74 | constraint none → start no earlier than 2009-01-20; resources none → Bryan; Elodie; Pierrick; Remi; Tony; baseline start none → 2009-01-20; baseline finish none → 2009-01-24 |
| 76 | Soutenance | 2008-09-22 → 2009-01-27 (+127d) | 2008-09-22 → 2009-01-27 (+127d) | 1d? → 0d |  |  | none → 75 | constraint none → start no earlier than 2009-01-27; baseline start none → 2009-01-27; baseline finish none → 2009-01-27 |
