# iGo_WBS2

How a schedule from MS Project changed from version to version. A marks actual dates.

## Version 1 (data date 2008-10-21, saved 2008-11-06)

| ID | WBS | Task | Duration | Start | Finish | Predecessors | Complete | Total float | Constraint |
| --- | --- | --- | --- | --- | --- | --- | --- | --- | --- |
| 1 | 1 | **Projet** | 117d? | 2008-09-22 A | 2009-01-27 |  | 26% | 0d |  |
| 2 | 1.1 | **Réunion hebdomadaire de l'équipe du projet** | 91d | 2008-09-22 A | 2008-12-22 |  |  | 26d |  |
| 3 |  | Réunion hebdomadaire de l'équipe du projet 1 | 0d | 2008-09-22 A | 2008-09-22 A |  | 100% |  | start no earlier than 2008-09-22 |
| 4 |  | Réunion hebdomadaire de l'équipe du projet 2 | 0d | 2008-09-29 A | 2008-09-29 A |  | 100% |  | start no earlier than 2008-09-29 |
| 5 |  | Réunion hebdomadaire de l'équipe du projet 3 | 0d | 2008-10-06 A | 2008-10-06 A |  | 100% |  | start no earlier than 2008-10-06 |
| 6 |  | Réunion hebdomadaire de l'équipe du projet 4 | 0d | 2008-10-13 A | 2008-10-13 A |  | 100% |  | start no earlier than 2008-10-13 |
| 7 |  | Réunion hebdomadaire de l'équipe du projet 5 | 0d | 2008-10-20 A | 2008-10-20 A |  | 100% |  | start no earlier than 2008-10-20 |
| 8 |  | Réunion hebdomadaire de l'équipe du projet 6 | 0d | 2008-10-27 | 2008-10-27 |  |  | 60.57d | start no earlier than 2008-10-27 |
| 9 |  | Réunion hebdomadaire de l'équipe du projet 7 | 0d | 2008-11-03 | 2008-11-03 |  |  | 53d | start no earlier than 2008-11-03 |
| 10 |  | Réunion hebdomadaire de l'équipe du projet 8 | 0d | 2008-11-10 | 2008-11-10 |  |  | 45.43d | start no earlier than 2008-11-10 |
| 11 |  | Réunion hebdomadaire de l'équipe du projet 9 | 0d | 2008-11-17 | 2008-11-17 |  |  | 37.86d | start no earlier than 2008-11-17 |
| 12 |  | Réunion hebdomadaire de l'équipe du projet 10 | 0d | 2008-11-24 | 2008-11-24 |  |  | 30.29d | start no earlier than 2008-11-24 |
| 13 |  | Réunion hebdomadaire de l'équipe du projet 11 | 0d | 2008-12-01 | 2008-12-01 |  |  | 22.71d | start no earlier than 2008-12-01 |
| 14 |  | Réunion hebdomadaire de l'équipe du projet 12 | 0d | 2008-12-08 | 2008-12-08 |  |  | 15.14d | start no earlier than 2008-12-08 |
| 15 |  | Réunion hebdomadaire de l'équipe du projet 13 | 0d | 2008-12-15 | 2008-12-15 |  |  | 7.57d | start no earlier than 2008-12-15 |
| 16 |  | Réunion hebdomadaire de l'équipe du projet 14 | 0d | 2008-12-22 | 2008-12-22 |  |  | 26.14d | start no earlier than 2008-12-22 |
| 17 | 1.2 | **Etude préalable** | 32d | 2008-09-22 A | 2008-10-23 A |  | 100% |  |  |
| 18 |  | Découpage prévisionnel | 1d | 2008-09-22 A | 2008-09-22 A |  | 100% |  |  |
| 19 | 1.2.2 | **Diagrammes fonctionnels (UML)** | 22d | 2008-09-23 A | 2008-10-14 A |  | 100% |  |  |
| 20 |  | Diagramme de classes | 10d | 2008-09-23 A | 2008-10-02 A | 18 | 100% |  |  |
| 21 |  | Diagrammes des cas d'utilisation | 10d | 2008-10-03 A | 2008-10-12 A | 20 | 100% |  |  |
| 22 |  | Diagrammes de séquence | 10d | 2008-10-03 A | 2008-10-14 A | 20 | 100% |  |  |
| 23 |  | Estimation des délais | 9d | 2008-09-23 A | 2008-10-01 A | 18 | 100% |  | start no earlier than 2008-09-22 |
| 24 |  | Contraintes techniques | 11d | 2008-10-03 A | 2008-10-13 A |  | 100% |  | start no earlier than 2008-10-03 |
| 25 |  | Ergonomie | 11d | 2008-10-07 A | 2008-10-17 A |  | 100% |  | start no earlier than 2008-10-07 |
| 26 |  | Etude qualité | 12d | 2008-10-03 A | 2008-10-16 A |  | 100% |  | start no earlier than 2008-10-03 |
| 27 |  | Rapport préalable | 5d | 2008-10-18 A | 2008-10-22 A | 18, 23, 24, 26, 25, 21, 22 | 100% |  | start no earlier than 2008-10-16 |
| 28 |  | Rendus 1 | 0d | 2008-10-23 A | 2008-10-23 A | 27 | 100% |  | must start on 2008-10-23 |
| 29 |  | Retour sur le Rendu 1 | 0d | 2008-11-03 A | 2008-11-03 A |  | 100% |  | start no earlier than 2008-11-03 |
| 30 | 1.4 | **Etude technique** | 28d | 2008-10-24 A | 2008-11-20 |  | 36% | 0d |  |
| 31 |  | Description des modules | 5d | 2008-10-24 A | 2008-10-28 | 28 | 50% | 19.5d |  |
| 32 | 1.4.2 | **Mise à jour des diagrammes** | 3d | 2008-11-03 | 2008-11-06 |  |  | 4.5d |  |
| 33 |  | Diagramme de classes | 3d | 2008-11-03 | 2008-11-06 | 29 |  | 4.5d |  |
| 34 |  | Diagrammes des cas d'utilisation | 2d | 2008-11-04 | 2008-11-05 | 29 |  | 11.5d |  |
| 35 |  | Diagrammes de séquence | 3d | 2008-11-04 | 2008-11-06 | 29 |  | 10.5d | start no earlier than 2008-11-04 |
| 36 |  | Spécification des plans de test | 6d | 2008-11-07 | 2008-11-12 | 33 |  | 4.5d |  |
| 37 |  | Algorithme de calcul | 10d | 2008-10-24 A | 2008-11-02 A | 28 | 100% |  |  |
| 38 |  | Plan de développement | 0d | 2008-10-28 A | 2008-10-28 A | 31 | 100% |  |  |
| 39 |  | Mise à jour du Planning | 2d | 2008-11-04 | 2008-11-05 |  |  | 11.5d | start no earlier than 2008-11-04 |
| 40 |  | PAQ complété | 3.5d | 2008-11-14 | 2008-11-17 | 31, 36, 39, 38, 37, 35, 34 |  | 3.5d | start no earlier than 2008-11-14 |
| 41 |  | Rendu 2 | 0d | 2008-11-20 | 2008-11-20 | 40 |  | 0d | must start on 2008-11-20 |
| 42 |  | Retour sur le rendu 2 | 0d | 2008-11-24 | 2008-11-24 |  |  | 3d | start no earlier than 2008-11-24 |
| 43 | 1.6 | **Réalisation** | 30d? | 2008-11-25 | 2008-12-24 |  |  | 3d |  |
| 44 | 1.6.1 | **Codage** | 20d? | 2008-11-25 | 2008-12-14 | 42 |  | 3d |  |
| 45 |  | IHM | 20d? | 2008-11-25 | 2008-12-14 |  |  | 3d |  |
| 46 |  | Evenements | 20d? | 2008-11-25 | 2008-12-14 |  |  | 3d |  |
| 47 |  | Gestion du réseau | 20d? | 2008-11-25 | 2008-12-14 |  |  | 3d |  |
| 48 |  | Algorithme de recherche | 20d? | 2008-11-25 | 2008-12-14 |  |  | 3d |  |
| 49 | 1.6.2 | **Documentations** | 10d? | 2008-12-15 | 2008-12-24 | 44 |  | 11d |  |
| 50 |  | IHM | 10d? | 2008-12-15 | 2008-12-24 |  |  | 11d |  |
| 51 |  | Evenements | 10d? | 2008-12-15 | 2008-12-24 |  |  | 11d |  |
| 52 |  | Gestion du réseau | 10d? | 2008-12-15 | 2008-12-24 |  |  | 11d |  |
| 53 |  | Algorithme de recherche | 10d? | 2008-12-15 | 2008-12-24 |  |  | 11d |  |
| 54 | 1.6.3 | **Tests unitaires** | 20d? | 2008-11-25 | 2008-12-14 | 44SS |  | 12d |  |
| 55 |  | IHM | 20d? | 2008-11-25 | 2008-12-14 |  |  | 12d |  |
| 56 |  | Evenements | 20d? | 2008-11-25 | 2008-12-14 |  |  | 12d |  |
| 57 |  | Gestion du réseau | 20d? | 2008-11-25 | 2008-12-14 |  |  | 12d |  |
| 58 |  | Algorithme de recherche | 20d? | 2008-11-25 | 2008-12-14 |  |  | 12d |  |
| 59 |  | Plan de recettes | 9.5d | 2008-12-15 | 2008-12-24 | 44 |  | 6.5d |  |
| 60 |  | Plan mise en œuvre utilisateur | 9d | 2008-12-15 | 2008-12-23 | 44 |  | 3d | start no earlier than 2008-12-01 |
| 61 | 1.7 | **Mise en œuvre** | 9d | 2008-12-24 | 2009-01-12 |  |  | 3d |  |
| 62 |  | Test d'integration | 2d | 2008-12-24 | 2009-01-05 | 54, 60 |  | 3d |  |
| 63 |  | Generalisation | 2d | 2009-01-06 | 2009-01-07 | 62 |  | 3d |  |
| 64 |  | PV de recette | 5d | 2009-01-08 | 2009-01-12 | 63, 59 |  | 3d |  |
| 65 |  | Rendu final | 0d | 2009-01-15 | 2009-01-15 | 49, 64 |  | 0d | must start on 2009-01-15 |
| 66 |  | Préparation soutenance | 5d | 2009-01-20 | 2009-01-24 | 65 |  | 3d | start no earlier than 2009-01-20 |
| 67 |  | Soutenance | 0d | 2009-01-27 | 2009-01-27 | 66 |  | 0d | start no earlier than 2009-01-27 |

## Version 2 (data date 2008-10-21, saved 2008-11-13)

Last finish stays 2009-01-27. Complete tasks 18 → 19.

Changed:

| ID | Task | Start | Finish | Complete | Total float |
| --- | --- | --- | --- | --- | --- |
| 1 | **Projet** |  |  | 26% → 27% |  |
| 30 | **Etude technique** |  |  | 36% → 42% |  |
| 39 | Mise à jour du Planning | 2008-11-04 A | 2008-11-05 A | 0% → 100% | 11.5d → none |

## Version 3 (data date 2008-10-21, saved 2008-11-13)

Last finish stays 2009-01-27.

Added:

| ID | Task | Duration | Start | Finish | Resources |
| --- | --- | --- | --- | --- | --- |
| 45 | StreamInFolder(event) | 20d? | 2008-11-25 | 2008-12-14 | Pierrick |
| 48 | iGoMaster | 20d? | 2008-11-25 | 2008-12-16 | Elodie |
| 49 | main | 20d? | 2008-11-25 | 2008-12-16 | Elodie |
| 53 | StreamInFolder(event) | 10d? | 2008-12-17 | 2009-01-06 | Pierrick |
| 56 | iGoMaster | 10d? | 2008-12-17 | 2009-01-06 | Elodie |
| 57 | main | 10d? | 2008-12-17 | 2009-01-06 | Elodie |
| 61 | StreamInFolder(event) | 20d? | 2008-11-25 | 2008-12-14 | Remi |
| 63 | graphNetwork | 20d? | 2008-11-25 | 2008-12-14 | Bryan |
| 64 | iGoMaster | 20d? | 2008-11-25 | 2008-12-14 | Tony |
| 65 | main | 20d? | 2008-11-25 | 2008-12-14 | Tony |

Removed: 57 Gestion du réseau

Changed:

| ID | Task | Start | Finish | Duration | Complete | Total float | Other |
| --- | --- | --- | --- | --- | --- | --- | --- |
| 1 | **Projet** |  |  |  | 27% → 19% |  |  |
| 43 | **Réalisation** |  | 2008-12-24 → 2009-01-06 (+13d) | 30d? → 32d? |  | 3d → 1d |  |
| 44 | **Codage** |  | 2008-12-14 → 2008-12-16 (+2d) | 20d? → 22d? |  | 3d → 1d |  |
| 46 | Algo |  |  |  |  |  | was named Evenements; resources Bryan → Tony |
| 47 | graphNetwork |  |  |  |  |  | was named Gestion du réseau; resources Bryan → Remi |
| 51 | XmlFeature |  |  |  |  |  | was named Algorithme de recherche |
| 52 | **Documentations** | 2008-12-15 → 2008-12-17 (+2d) | 2008-12-24 → 2009-01-06 (+13d) |  |  | 11d → 9d |  |
| 54 | Algo | 2008-12-15 → 2008-12-17 (+2d) | 2008-12-24 → 2009-01-06 (+13d) |  |  | 11d → 9d | was named Evenements; resources Bryan → Tony |
| 55 | graphNetwork | 2008-12-15 → 2008-12-17 (+2d) | 2008-12-24 → 2009-01-06 (+13d) |  |  | 11d → 9d | was named Gestion du réseau; resources Bryan → Remi |
| 58 | IHM | 2008-12-15 → 2008-12-17 (+2d) | 2008-12-24 → 2009-01-06 (+13d) |  |  | 11d → 9d |  |
| 59 | XmlFeature | 2008-12-15 → 2008-12-17 (+2d) | 2008-12-24 → 2009-01-06 (+13d) |  |  | 11d → 9d | was named Algorithme de recherche |
| 60 | **Tests unitaires** |  | 2008-12-14 → 2008-12-16 (+2d) | 20d? → 22d? |  | 12d → 10d |  |
| 62 | Algo |  | 2008-12-14 → 2008-12-16 (+2d) |  |  | 12d → 10d | was named Evenements; resources Bryan → Elodie |
| 66 | IHM |  |  |  |  |  | resources Bryan → Pierrick |
| 67 | XmlFeature |  |  |  |  |  | was named Algorithme de recherche; resources Bryan → Remi |
| 68 | Plan de recettes | 2008-12-15 → 2008-12-17 (+2d) | 2008-12-24 → 2009-01-06 (+13d) |  |  | 6.5d → 4.5d |  |
| 69 | Plan mise en œuvre utilisateur | 2008-12-15 → 2008-12-17 (+2d) | 2008-12-23 → 2009-01-05 (+13d) |  |  | 3d → 1d |  |
| 70 | **Mise en œuvre** | 2008-12-24 → 2009-01-06 (+13d) | 2009-01-12 → 2009-01-14 (+2d) |  |  | 3d → 1d |  |
| 71 | Test d'integration | 2008-12-24 → 2009-01-06 (+13d) | 2009-01-05 → 2009-01-07 (+2d) |  |  | 3d → 1d |  |
| 72 | Generalisation | 2009-01-06 → 2009-01-08 (+2d) | 2009-01-07 → 2009-01-09 (+2d) |  |  | 3d → 1d |  |
| 73 | PV de recette | 2009-01-08 → 2009-01-10 (+2d) | 2009-01-12 → 2009-01-14 (+2d) |  |  | 3d → 1d |  |

## Version 4 (data date 2008-10-21, saved 2008-11-13)

Last finish stays 2009-01-27.

Changed:

| ID | Task | Other |
| --- | --- | --- |
| 36 | plans de test | was named Spécification des plans de test |

## Version 5 (data date 2008-10-21, saved 2008-11-20)

Last finish stays 2009-01-27. Complete tasks 19 → 25.

Changed:

| ID | Task | Start | Finish | Complete | Total float |
| --- | --- | --- | --- | --- | --- |
| 1 | **Projet** |  |  | 19% → 23% |  |
| 30 | **Etude technique** |  |  | 42% → 99% |  |
| 31 | Description des modules |  | 2008-10-28 A | 50% → 100% | 19.5d → none |
| 32 | **Mise à jour des diagrammes** | 2008-11-03 A | 2008-11-06 A | 0% → 100% | 4.5d → none |
| 33 | Diagramme de classes | 2008-11-03 A | 2008-11-06 A | 0% → 100% | 4.5d → none |
| 34 | Diagrammes des cas d'utilisation | 2008-11-04 A | 2008-11-05 A | 0% → 100% | 11.5d → none |
| 35 | Diagrammes de séquence | 2008-11-04 A | 2008-11-06 A | 0% → 100% | 10.5d → none |
| 36 | plans de test | 2008-11-07 A | 2008-11-12 A | 0% → 100% | 4.5d → none |
| 40 | PAQ complété | 2008-11-14 A | 2008-11-17 A | 0% → 100% | 3.5d → none |

## Version 6 (data date 2008-10-21, saved 2008-11-24)

Last finish stays 2009-01-27. Complete tasks 25 → 26.

Changed:

| ID | Task | Start | Finish | Complete | Total float |
| --- | --- | --- | --- | --- | --- |
| 30 | **Etude technique** |  | 2008-11-20 A | 99% → 100% | 0d → none |
| 41 | Rendu 2 | 2008-11-20 A | 2008-11-20 A | 0% → 100% | 0d → none |

## Version 7 (data date 2008-10-21, saved 2008-12-14)

Last finish stays 2009-01-27. Complete tasks 26 → 34.

Changed:

| ID | Task | Start | Finish | Complete | Total float |
| --- | --- | --- | --- | --- | --- |
| 8 | Réunion hebdomadaire de l'équipe du projet 6 | 2008-10-27 A | 2008-10-27 A | 0% → 100% | 60.57d → none |
| 9 | Réunion hebdomadaire de l'équipe du projet 7 | 2008-11-03 A | 2008-11-03 A | 0% → 100% | 53d → none |
| 10 | Réunion hebdomadaire de l'équipe du projet 8 | 2008-11-10 A | 2008-11-10 A | 0% → 100% | 45.43d → none |
| 11 | Réunion hebdomadaire de l'équipe du projet 9 | 2008-11-17 A | 2008-11-17 A | 0% → 100% | 37.86d → none |
| 12 | Réunion hebdomadaire de l'équipe du projet 10 | 2008-11-24 A | 2008-11-24 A | 0% → 100% | 30.29d → none |
| 13 | Réunion hebdomadaire de l'équipe du projet 11 | 2008-12-01 A | 2008-12-01 A | 0% → 100% | 22.71d → none |
| 14 | Réunion hebdomadaire de l'équipe du projet 12 | 2008-12-08 A | 2008-12-08 A | 0% → 100% | 15.14d → none |
| 15 | Réunion hebdomadaire de l'équipe du projet 13 | 2008-12-15 A | 2008-12-15 A | 0% → 100% | 7.57d → none |

## Version 8 (data date 2008-10-21, saved 2008-12-23)

Last finish stays 2009-01-27. Complete tasks 34 → 42.

Changed:

| ID | Task | Start | Finish | Duration | Complete | Total float | Other |
| --- | --- | --- | --- | --- | --- | --- | --- |
| 1 | **Projet** |  |  |  | 23% → 79% |  |  |
| 42 | Retour sur le rendu 2 | 2008-11-24 A | 2008-11-24 A |  | 0% → 100% | 1d → none |  |
| 43 | **Réalisation** | 2008-11-25 A |  |  | 0% → 76% | 1d → 4d |  |
| 44 | **Codage** | 2008-11-25 A |  |  | 0% → 75% |  |  |
| 45 | StreamInFolder(event) | 2008-11-25 A |  | 20d? → 20d | 0% → 75% |  |  |
| 46 | Algo | 2008-11-25 A |  | 20d? → 20d | 0% → 75% |  |  |
| 47 | graphNetwork | 2008-11-25 A |  | 20d? → 20d | 0% → 75% |  |  |
| 48 | iGoMaster | 2008-11-25 A |  | 20d? → 20d | 0% → 75% |  |  |
| 49 | main | 2008-11-25 A |  | 20d? → 20d | 0% → 75% |  |  |
| 50 | IHM | 2008-11-25 A |  |  | 0% → 75% |  | resources Bryan → Bryan [50%] |
| 51 | XmlFeature | 2008-11-25 A |  |  | 0% → 75% |  | resources Bryan → Bryan [50%] |
| 52 | **Documentations** | 2008-12-17 A | 2009-01-06 A |  | 0% → 100% | 9d → none |  |
| 53 | StreamInFolder(event) | 2008-12-17 A | 2009-01-06 A |  | 0% → 100% | 9d → none |  |
| 54 | Algo | 2008-12-17 A | 2009-01-06 A |  | 0% → 100% | 9d → none |  |
| 55 | graphNetwork | 2008-12-17 A | 2009-01-06 A |  | 0% → 100% | 9d → none |  |
| 56 | iGoMaster | 2008-12-17 A | 2009-01-06 A |  | 0% → 100% | 9d → none |  |
| 57 | main | 2008-12-17 A | 2009-01-06 A |  | 0% → 100% | 9d → none |  |
| 58 | IHM | 2008-12-17 A | 2009-01-06 A |  | 0% → 100% | 9d → none |  |
| 59 | XmlFeature | 2008-12-17 A | 2009-01-06 A |  | 0% → 100% | 9d → none |  |
| 60 | **Tests unitaires** | 2008-11-25 A |  | 22d? → 22d | 0% → 75% |  |  |
| 61 | StreamInFolder(event) | 2008-11-25 A |  | 20d? → 20d | 0% → 75% |  |  |
| 62 | Algo | 2008-11-25 A |  | 20d? → 20d | 0% → 75% |  |  |
| 63 | graphNetwork | 2008-11-25 A |  | 20d? → 20d | 0% → 75% |  |  |
| 64 | iGoMaster | 2008-11-25 A |  | 20d? → 20d | 0% → 75% |  |  |
| 65 | main | 2008-11-25 A |  | 20d? → 20d | 0% → 75% |  |  |
| 66 | IHM | 2008-11-25 A |  | 20d? → 20d | 0% → 75% |  |  |
| 67 | XmlFeature | 2008-11-25 A |  | 20d? → 20d | 0% → 75% |  |  |

## Version 9 (data date 2008-10-21, saved 2009-01-08)

Note of the change: nouvelle mise a jour du project

Last finish stays 2009-01-27. Complete tasks 42 → 49.

Changed:

| ID | Task | Start | Finish | Duration | Complete | Total float | Other |
| --- | --- | --- | --- | --- | --- | --- | --- |
| 1 | **Projet** |  |  |  | 79% → 90% |  |  |
| 2 | **Réunion hebdomadaire de l'équipe du projet** |  | 2008-12-22 A |  | 0% → 100% | 26d → none |  |
| 16 | Réunion hebdomadaire de l'équipe du projet 14 | 2008-12-22 A | 2008-12-22 A |  | 0% → 100% | 26.14d → none |  |
| 17 | **Etude préalable** |  | 2008-10-23 A → 2008-10-23 |  |  | none → 0d |  |
| 22 | Diagrammes de séquence |  |  |  |  |  | resources Tony [50%]; Elodie [50%]; Bryan [50%] → Tony [50%]; Elodie; Bryan [50%] |
| 39 | Mise à jour du Planning |  |  |  |  |  | resources Tony [50%] → Tony [33%] |
| 43 | **Réalisation** |  |  |  | 76% → 90% |  |  |
| 44 | **Codage** |  |  |  | 75% → 96% |  |  |
| 45 | StreamInFolder(event) |  | 2008-12-14 A |  | 75% → 100% | 3d → none | resources Pierrick → Pierrick [50%] |
| 46 | Algo |  | 2008-12-14 A |  | 75% → 100% | 3d → none | resources Tony → Tony [33%] |
| 47 | graphNetwork |  | 2008-12-14 → 2008-12-15 A (+1d) | 20d → 21d | 75% → 100% | 3d → none | resources Remi → Remi [33%] |
| 48 | iGoMaster |  |  |  |  |  | resources Elodie → Elodie [33%] |
| 49 | main |  | 2008-12-16 A |  | 75% → 100% | 1d → none | resources Elodie → Elodie [33%] |
| 50 | IHM |  | 2008-12-14 A |  | 75% → 100% | 3d → none | resources Bryan [50%] → Bryan [33%] |
| 51 | XmlFeature |  | 2008-12-14 A |  | 75% → 100% | 3d → none | resources Bryan [50%] → Bryan [33%] |
| 53 | StreamInFolder(event) |  |  |  |  |  | resources Pierrick → Pierrick [50%] |
| 54 | Algo |  |  |  |  |  | resources Tony → Tony [50%] |
| 56 | iGoMaster |  |  |  |  |  | resources Elodie → Elodie [50%] |
| 57 | main |  |  |  |  |  | resources Elodie → Elodie [33%] |
| 58 | IHM |  |  |  |  |  | resources Bryan → Bryan [50%] |
| 59 | XmlFeature |  |  |  |  |  | resources Bryan → Bryan [50%] |
| 60 | **Tests unitaires** |  |  |  | 75% → 90% |  |  |
| 61 | StreamInFolder(event) |  |  |  | 75% → 90% |  | resources Remi → Remi [33%] |
| 62 | Algo |  |  |  | 75% → 90% |  | resources Elodie → Elodie [33%] |
| 63 | graphNetwork |  |  |  | 75% → 90% |  | resources Bryan → Bryan [33%] |
| 64 | iGoMaster |  |  |  | 75% → 90% |  | resources Tony → Tony [33%] |
| 65 | main |  |  |  | 75% → 90% |  | resources Tony → Tony [33%] |
| 66 | IHM |  |  |  | 75% → 90% |  | resources Pierrick → Pierrick [50%] |
| 67 | XmlFeature |  |  |  | 75% → 90% |  | resources Remi → Remi [33%] |
| 68 | Plan de recettes | 2008-12-17 A |  |  | 0% → 25% |  |  |
| 69 | Plan mise en œuvre utilisateur |  |  |  |  |  | resources Pierrick [50%]; Bryan [50%]; Remi [50%] → Pierrick [50%]; Bryan [33%]; Remi [50%] |

## Version 10 (data date 2008-10-21, saved 2009-01-15)

Last finish stays 2009-01-27. Complete tasks 49 → 62.

Changed:

| ID | Task | Start | Finish | Duration | Complete | Total float | Predecessors | Other |
| --- | --- | --- | --- | --- | --- | --- | --- | --- |
| 1 | **Projet** |  |  |  | 90% → 99% |  |  |  |
| 17 | **Etude préalable** |  | 2008-10-23 A |  |  | 0d → none |  |  |
| 43 | **Réalisation** |  | 2009-01-06 → 2009-01-09 A (+3d) | 32d? → 34.5d? | 90% → 100% | 4d → none |  |  |
| 44 | **Codage** |  | 2008-12-16 → 2009-01-09 A (+24d) | 22d? → 34.5d? | 96% → 100% | 1d → none |  |  |
| 45 | StreamInFolder(event) |  | 2008-12-14 A → 2009-01-06 A (+23d) | 20d → 32d |  |  |  |  |
| 46 | Algo |  | 2008-12-14 A → 2009-01-06 A (+23d) | 20d → 32d |  |  |  |  |
| 47 | graphNetwork |  | 2008-12-15 A → 2009-01-06 A (+22d) | 21d → 32d |  |  |  |  |
| 48 | iGoMaster |  | 2008-12-16 → 2009-01-09 A (+24d) | 20d → 32.5d | 75% → 100% | 1d → none |  |  |
| 49 | main |  | 2008-12-16 A → 2009-01-08 A (+23d) | 20d → 32d |  |  |  | constraint none → finish no earlier than 2009-01-07 |
| 50 | IHM |  | 2008-12-14 A → 2009-01-06 A (+23d) | 20d? → 32d? |  |  |  |  |
| 51 | XmlFeature |  | 2008-12-14 A → 2009-01-08 A (+25d) | 20d? → 34d? |  |  |  |  |
| 60 | **Tests unitaires** |  | 2008-12-16 → 2009-01-07 A (+22d) | 22d → 33d | 90% → 100% | 10d → none |  |  |
| 61 | StreamInFolder(event) |  | 2008-12-14 → 2008-12-24 A (+10d) |  | 90% → 100% | 12d → none |  |  |
| 62 | Algo |  | 2008-12-16 → 2008-12-24 A (+8d) |  | 90% → 100% | 10d → none |  |  |
| 63 | graphNetwork |  | 2008-12-14 → 2008-12-23 A (+9d) |  | 90% → 100% | 12d → none |  |  |
| 64 | iGoMaster |  | 2008-12-14 → 2008-12-23 A (+9d) |  | 90% → 100% | 12d → none |  |  |
| 65 | main |  | 2008-12-14 → 2009-01-07 A (+24d) |  | 90% → 100% | 12d → none |  |  |
| 66 | IHM |  | 2008-12-14 → 2008-12-23 A (+9d) |  | 90% → 100% | 12d → none |  |  |
| 67 | XmlFeature |  | 2008-12-14 A |  | 90% → 100% | 12d → none |  |  |
| 68 | Plan de recettes |  | 2009-01-06 A |  | 25% → 100% | 4.5d → none |  |  |
| 69 | Plan mise en œuvre utilisateur | 2008-12-17 A | 2009-01-05 A |  | 0% → 100% | 1d → none |  |  |
| 70 | **Mise en œuvre** | 2009-01-06 → 2008-12-24 A (-13d) | 2009-01-14 A | 9d → 11d | 0% → 100% | 1d → none |  |  |
| 71 | Test d'integration | 2009-01-06 → 2008-12-24 A (-13d) | 2009-01-07 A | 2d → 4d | 0% → 100% | 1d → none | 60, 69 → none | constraint none → start no earlier than 2008-12-24 |
| 72 | Generalisation | 2009-01-08 A | 2009-01-09 A |  | 0% → 100% | 1d → none |  |  |
| 73 | PV de recette | 2009-01-10 A | 2009-01-14 A |  | 0% → 100% | 1d → none |  |  |
| 74 | Rendu final |  |  |  |  |  | 52, 73 → 52, 73, 71 |  |
